# Project-Step2-A&DHighTech-Project-Plan (2)072016

Schedule from MS Project, 2014-05-27 to 2015-02-24, costs in $.
Toshiba

## Calendars

- Standard: Mon-Fri 08:00-12:00, 13:00-17:00; Sat-Sun off. Exceptions (off unless hours are given): 2014-07-04 (Independence Day), 2014-09-01 (Labor Day), 2014-11-27 (Thanks Giving Day), 2014-12-24 to 2014-12-25 (Christmas), 2014-12-31 to 2015-01-01 (New Year's).

## Resources

| Resource | Rate |
| --- | --- |
| Chris Johnson (Project Manager) | 75 |
| Ryan Neff (Functional Lead) | 75 |
| Stacy Lyle (Functional Analyst) | 75 |
| Rick Burke (Infrastructure Lead) | 75 |
| Marc Sanders (Development Lead) | 75 |
| Developer 1 (TBD) | 165 |
| Sanjay Vohra (DBA) | 75 |
| Kara Siposki (Test Lead) | 75 |
| Todd Eliason (Tester) | 75 |
| Developer 2 (TBD) | 175 |
| Developer 3 (TBD) | 175 |
| Trainer 1 | 75 |
| End-User | 75 |
| ERP Expert | 175 |
| Order Processing expert | 175 |
| Rick Burke (Infrastru... |  |
| Additional Analyst 1 |  |
| Additional Analyst 2 |  |

## Schedule

| ID | WBS | Task | Duration | Start | Finish | Predecessors | Total slack | Free slack | Constraint | Resources | Work | Cost |
| --- | --- | --- | --- | --- | --- | --- | --- | --- | --- | --- | --- | --- |
| 1 | 1 | **Overall Project** | 188.69d | 2014-05-27 | 2015-02-24 |  | -5d | 0d |  |  | 10187.6h | 1,009,207.17 |
| 2 | 1.1 | **Project Management** | 160d | 2014-05-27 | 2015-01-14 |  | 28.69d |  |  |  | 1808h | 138,260 |
| 3 | 1.1.1 | Manage Project | 160d | 2014-05-27 | 2015-01-14 | 145FF | 208.69d |  |  | Chris Johnson (Project Manager) [90%] | 1152h | 86,400 |
| 4 | 1.1.2 | Document project progress | 125d | 2014-05-30 | 2014-11-25 | 144FF | 240d |  |  | Chris Johnson (Project Manager) [10%] | 100h | 7,500 |
| 5 | 1.1.3 | **Project Team Status Meetings** | 159d | 2014-05-27 | 2015-01-13 |  | 29.69d |  |  |  | 528h | 42,260 |
| 6 | 1.1.3.1 | **Weekly Team Lead Meeting** | 159d | 2014-05-27 | 2015-01-13 |  | 29.69d |  |  |  | 346h | 25,950 |
| 7 | 1.1.3.1.1 | Weekly Team Lead Meeting 1 | 4d | 2014-05-27 | 2014-05-30 |  | 364.69d |  | start no earlier than 2014-05-27 | Chris Johnson (Project Manager) [25%]; Kara Siposki (Test Lead) [25%]; Marc Sanders (Development Lead) [25%]; Rick Burke (Infrastructure Lead) [25%]; Ryan Neff (Functional Lead) [25%] | 16h | 1,200 |
| 8 | 1.1.3.1.2 | Weekly Team Lead Meeting 2 | 1d | 2014-06-03 | 2014-06-03 |  | 362.69d |  | start no earlier than 2014-06-03 | Chris Johnson (Project Manager) [25%]; Kara Siposki (Test Lead) [25%]; Marc Sanders (Development Lead) [25%]; Rick Burke (Infrastructure Lead) [25%]; Ryan Neff (Functional Lead) [25%] | 10h | 750 |
| 9 | 1.1.3.1.3 | Weekly Team Lead Meeting 3 | 1d | 2014-06-10 | 2014-06-10 |  | 357.69d |  | start no earlier than 2014-06-10 | Chris Johnson (Project Manager) [25%]; Kara Siposki (Test Lead) [25%]; Marc Sanders (Development Lead) [25%]; Rick Burke (Infrastructure Lead) [25%]; Ryan Neff (Functional Lead) [25%] | 10h | 750 |
| 10 | 1.1.3.1.4 | Weekly Team Lead Meeting 4 | 1d | 2014-06-17 | 2014-06-17 |  | 352.69d |  | start no earlier than 2014-06-17 | Chris Johnson (Project Manager) [25%]; Kara Siposki (Test Lead) [25%]; Marc Sanders (Development Lead) [25%]; Rick Burke (Infrastructure Lead) [25%]; Ryan Neff (Functional Lead) [25%] | 10h | 750 |
| 11 | 1.1.3.1.5 | Weekly Team Lead Meeting 5 | 1d | 2014-06-24 | 2014-06-24 |  | 347.69d |  | start no earlier than 2014-06-24 | Chris Johnson (Project Manager) [25%]; Kara Siposki (Test Lead) [25%]; Marc Sanders (Development Lead) [25%]; Rick Burke (Infrastructure Lead) [25%]; Ryan Neff (Functional Lead) [25%] | 10h | 750 |
| 12 | 1.1.3.1.6 | Weekly Team Lead Meeting 6 | 1d | 2014-07-01 | 2014-07-01 |  | 342.69d |  | start no earlier than 2014-07-01 | Chris Johnson (Project Manager) [25%]; Kara Siposki (Test Lead) [25%]; Marc Sanders (Development Lead) [25%]; Rick Burke (Infrastructure Lead) [25%]; Ryan Neff (Functional Lead) [25%] | 10h | 750 |
| 13 | 1.1.3.1.7 | Weekly Team Lead Meeting 7 | 1d | 2014-07-08 | 2014-07-08 |  | 338.69d |  | start no earlier than 2014-07-08 | Chris Johnson (Project Manager) [25%]; Kara Siposki (Test Lead) [25%]; Marc Sanders (Development Lead) [25%]; Rick Burke (Infrastructure Lead) [25%]; Ryan Neff (Functional Lead) [25%] | 10h | 750 |
| 14 | 1.1.3.1.8 | Weekly Team Lead Meeting 8 | 1d | 2014-07-15 | 2014-07-15 |  | 333.69d |  | start no earlier than 2014-07-15 | Chris Johnson (Project Manager) [25%]; Kara Siposki (Test Lead) [25%]; Marc Sanders (Development Lead) [25%]; Rick Burke (Infrastructure Lead) [25%]; Ryan Neff (Functional Lead) [25%] | 10h | 750 |
| 15 | 1.1.3.1.9 | Weekly Team Lead Meeting 9 | 1d | 2014-07-22 | 2014-07-22 |  | 328.69d |  | start no earlier than 2014-07-22 | Chris Johnson (Project Manager) [25%]; Kara Siposki (Test Lead) [25%]; Marc Sanders (Development Lead) [25%]; Rick Burke (Infrastructure Lead) [25%]; Ryan Neff (Functional Lead) [25%] | 10h | 750 |
| 16 | 1.1.3.1.10 | Weekly Team Lead Meeting 10 | 1d | 2014-07-29 | 2014-07-29 |  | 323.69d |  | start no earlier than 2014-07-29 | Chris Johnson (Project Manager) [25%]; Kara Siposki (Test Lead) [25%]; Marc Sanders (Development Lead) [25%]; Rick Burke (Infrastructure Lead) [25%]; Ryan Neff (Functional Lead) [25%] | 10h | 750 |
| 17 | 1.1.3.1.11 | Weekly Team Lead Meeting 11 | 1d | 2014-08-05 | 2014-08-05 |  | 318.69d |  | start no earlier than 2014-08-05 | Chris Johnson (Project Manager) [25%]; Kara Siposki (Test Lead) [25%]; Marc Sanders (Development Lead) [25%]; Rick Burke (Infrastructure Lead) [25%]; Ryan Neff (Functional Lead) [25%] | 10h | 750 |
| 18 | 1.1.3.1.12 | Weekly Team Lead Meeting 12 | 1d | 2014-08-12 | 2014-08-12 |  | 313.69d |  | start no earlier than 2014-08-12 | Chris Johnson (Project Manager) [25%]; Kara Siposki (Test Lead) [25%]; Marc Sanders (Development Lead) [25%]; Rick Burke (Infrastructure Lead) [25%]; Ryan Neff (Functional Lead) [25%] | 10h | 750 |
| 19 | 1.1.3.1.13 | Weekly Team Lead Meeting 13 | 1d | 2014-08-19 | 2014-08-19 |  | 308.69d |  | start no earlier than 2014-08-19 | Chris Johnson (Project Manager) [25%]; Kara Siposki (Test Lead) [25%]; Marc Sanders (Development Lead) [25%]; Rick Burke (Infrastructure Lead) [25%]; Ryan Neff (Functional Lead) [25%] | 10h | 750 |
| 20 | 1.1.3.1.14 | Weekly Team Lead Meeting 14 | 1d | 2014-08-26 | 2014-08-26 |  | 303.69d |  | start no earlier than 2014-08-26 | Chris Johnson (Project Manager) [25%]; Kara Siposki (Test Lead) [25%]; Marc Sanders (Development Lead) [25%]; Rick Burke (Infrastructure Lead) [25%]; Ryan Neff (Functional Lead) [25%] | 10h | 750 |
| 21 | 1.1.3.1.15 | Weekly Team Lead Meeting 15 | 1d | 2014-09-02 | 2014-09-02 |  | 299.69d |  | start no earlier than 2014-09-02 | Chris Johnson (Project Manager) [25%]; Kara Siposki (Test Lead) [25%]; Marc Sanders (Development Lead) [25%]; Rick Burke (Infrastructure Lead) [25%]; Ryan Neff (Functional Lead) [25%] | 10h | 750 |
| 22 | 1.1.3.1.16 | Weekly Team Lead Meeting 16 | 1d | 2014-09-09 | 2014-09-09 |  | 294.69d |  | start no earlier than 2014-09-09 | Chris Johnson (Project Manager) [25%]; Kara Siposki (Test Lead) [25%]; Marc Sanders (Development Lead) [25%]; Rick Burke (Infrastructure Lead) [25%]; Ryan Neff (Functional Lead) [25%] | 10h | 750 |
| 23 | 1.1.3.1.17 | Weekly Team Lead Meeting 17 | 1d | 2014-09-16 | 2014-09-16 |  | 289.69d |  | start no earlier than 2014-09-16 | Chris Johnson (Project Manager) [25%]; Kara Siposki (Test Lead) [25%]; Marc Sanders (Development Lead) [25%]; Rick Burke (Infrastructure Lead) [25%]; Ryan Neff (Functional Lead) [25%] | 10h | 750 |
| 24 | 1.1.3.1.18 | Weekly Team Lead Meeting 18 | 1d | 2014-09-23 | 2014-09-23 |  | 284.69d |  | start no earlier than 2014-09-23 | Chris Johnson (Project Manager) [25%]; Kara Siposki (Test Lead) [25%]; Marc Sanders (Development Lead) [25%]; Rick Burke (Infrastructure Lead) [25%]; Ryan Neff (Functional Lead) [25%] | 10h | 750 |
| 25 | 1.1.3.1.19 | Weekly Team Lead Meeting 19 | 1d | 2014-09-30 | 2014-09-30 |  | 279.69d |  | start no earlier than 2014-09-30 | Chris Johnson (Project Manager) [25%]; Kara Siposki (Test Lead) [25%]; Marc Sanders (Development Lead) [25%]; Rick Burke (Infrastructure Lead) [25%]; Ryan Neff (Functional Lead) [25%] | 10h | 750 |
| 26 | 1.1.3.1.20 | Weekly Team Lead Meeting 20 | 1d | 2014-10-07 | 2014-10-07 |  | 274.69d |  | start no earlier than 2014-10-07 | Chris Johnson (Project Manager) [25%]; Kara Siposki (Test Lead) [25%]; Marc Sanders (Development Lead) [25%]; Rick Burke (Infrastructure Lead) [25%]; Ryan Neff (Functional Lead) [25%] | 10h | 750 |
| 27 | 1.1.3.1.21 | Weekly Team Lead Meeting 21 | 1d | 2014-10-14 | 2014-10-14 |  | 269.69d |  | start no earlier than 2014-10-14 | Chris Johnson (Project Manager) [25%]; Kara Siposki (Test Lead) [25%]; Marc Sanders (Development Lead) [25%]; Rick Burke (Infrastructure Lead) [25%]; Ryan Neff (Functional Lead) [25%] | 10h | 750 |
| 28 | 1.1.3.1.22 | Weekly Team Lead Meeting 22 | 1d | 2014-10-21 | 2014-10-21 |  | 264.69d |  | start no earlier than 2014-10-21 | Chris Johnson (Project Manager) [25%]; Kara Siposki (Test Lead) [25%]; Marc Sanders (Development Lead) [25%]; Rick Burke (Infrastructure Lead) [25%]; Ryan Neff (Functional Lead) [25%] | 10h | 750 |
| 29 | 1.1.3.1.23 | Weekly Team Lead Meeting 23 | 1d | 2014-10-28 | 2014-10-28 |  | 259.69d |  | start no earlier than 2014-10-28 | Chris Johnson (Project Manager) [25%]; Kara Siposki (Test Lead) [25%]; Marc Sanders (Development Lead) [25%]; Rick Burke (Infrastructure Lead) [25%]; Ryan Neff (Functional Lead) [25%] | 10h | 750 |
| 30 | 1.1.3.1.24 | Weekly Team Lead Meeting 24 | 1d | 2014-11-04 | 2014-11-04 |  | 254.69d |  | start no earlier than 2014-11-04 | Chris Johnson (Project Manager) [25%]; Kara Siposki (Test Lead) [25%]; Marc Sanders (Development Lead) [25%]; Rick Burke (Infrastructure Lead) [25%]; Ryan Neff (Functional Lead) [25%] | 10h | 750 |
| 31 | 1.1.3.1.25 | Weekly Team Lead Meeting 25 | 1d | 2014-11-11 | 2014-11-11 |  | 249.69d |  | start no earlier than 2014-11-11 | Chris Johnson (Project Manager) [25%]; Kara Siposki (Test Lead) [25%]; Marc Sanders (Development Lead) [25%]; Rick Burke (Infrastructure Lead) [25%]; Ryan Neff (Functional Lead) [25%] | 10h | 750 |
| 32 | 1.1.3.1.26 | Weekly Team Lead Meeting 26 | 1d | 2014-11-18 | 2014-11-18 |  | 244.69d |  | start no earlier than 2014-11-18 | Chris Johnson (Project Manager) [25%]; Kara Siposki (Test Lead) [25%]; Marc Sanders (Development Lead) [25%]; Rick Burke (Infrastructure Lead) [25%]; Ryan Neff (Functional Lead) [25%] | 10h | 750 |
| 33 | 1.1.3.1.27 | Weekly Team Lead Meeting 27 | 1d | 2014-11-25 | 2014-11-25 |  | 239.69d |  | start no earlier than 2014-11-25 | Chris Johnson (Project Manager) [25%]; Kara Siposki (Test Lead) [25%]; Marc Sanders (Development Lead) [25%]; Rick Burke (Infrastructure Lead) [25%]; Ryan Neff (Functional Lead) [25%] | 10h | 750 |
| 34 | 1.1.3.1.28 | Weekly Team Lead Meeting 28 | 1d | 2014-12-02 | 2014-12-02 |  | 235.69d |  | start no earlier than 2014-12-02 | Chris Johnson (Project Manager) [25%]; Kara Siposki (Test Lead) [25%]; Marc Sanders (Development Lead) [25%]; Rick Burke (Infrastructure Lead) [25%]; Ryan Neff (Functional Lead) [25%] | 10h | 750 |
| 35 | 1.1.3.1.29 | Weekly Team Lead Meeting 29 | 1d | 2014-12-09 | 2014-12-09 |  | 230.69d |  | start no earlier than 2014-12-09 | Chris Johnson (Project Manager) [25%]; Kara Siposki (Test Lead) [25%]; Marc Sanders (Development Lead) [25%]; Rick Burke (Infrastructure Lead) [25%]; Ryan Neff (Functional Lead) [25%] | 10h | 750 |
| 36 | 1.1.3.1.30 | Weekly Team Lead Meeting 30 | 1d | 2014-12-16 | 2014-12-16 |  | 225.69d |  | start no earlier than 2014-12-16 | Chris Johnson (Project Manager) [25%]; Kara Siposki (Test Lead) [25%]; Marc Sanders (Development Lead) [25%]; Rick Burke (Infrastructure Lead) [25%]; Ryan Neff (Functional Lead) [25%] | 10h | 750 |
| 37 | 1.1.3.1.31 | Weekly Team Lead Meeting 31 | 1d | 2014-12-23 | 2014-12-23 |  | 220.69d |  | start no earlier than 2014-12-23 | Chris Johnson (Project Manager) [25%]; Kara Siposki (Test Lead) [25%]; Marc Sanders (Development Lead) [25%]; Rick Burke (Infrastructure Lead) [25%]; Ryan Neff (Functional Lead) [25%] | 10h | 750 |
| 38 | 1.1.3.1.32 | Weekly Team Lead Meeting 32 | 1d | 2014-12-30 | 2014-12-30 |  | 217.69d |  | start no earlier than 2014-12-30 | Chris Johnson (Project Manager) [25%]; Kara Siposki (Test Lead) [25%]; Marc Sanders (Development Lead) [25%]; Rick Burke (Infrastructure Lead) [25%]; Ryan Neff (Functional Lead) [25%] | 10h | 750 |
| 39 | 1.1.3.1.33 | Weekly Team Lead Meeting 33 | 1d | 2015-01-06 | 2015-01-06 |  | 214.69d |  | start no earlier than 2015-01-06 | Chris Johnson (Project Manager) [25%]; Kara Siposki (Test Lead) [25%]; Marc Sanders (Development Lead) [25%]; Rick Burke (Infrastructure Lead) [25%]; Ryan Neff (Functional Lead) [25%] | 10h | 750 |
| 40 | 1.1.3.1.34 | Weekly Team Lead Meeting 34 | 1d | 2015-01-13 | 2015-01-13 |  | 209.69d |  | start no earlier than 2015-01-13 | Chris Johnson (Project Manager) [25%]; Kara Siposki (Test Lead) [25%]; Marc Sanders (Development Lead) [25%]; Rick Burke (Infrastructure Lead) [25%]; Ryan Neff (Functional Lead) [25%] | 10h | 750 |

| ID | WBS | Task | Duration | Start | Finish | Predecessors | Total slack | Free slack | Constraint | Resources | Work | Cost |
| --- | --- | --- | --- | --- | --- | --- | --- | --- | --- | --- | --- | --- |
| 41 | 1.1.3.2 | **Monthly All Hands Meeting** | 127d | 2014-06-26 | 2014-12-26 |  | 39.69d |  |  |  | 182h | 16,310 |
| 42 | 1.1.3.2.1 | Monthly All Hands Meeting 1 | 1d | 2014-06-26 | 2014-06-26 |  | 345.69d |  | start no earlier than 2014-06-26 | Chris Johnson (Project Manager) [25%]; Developer 1 (TBD) [25%]; Developer 2 (TBD) [25%]; Developer 3 (TBD) [25%]; End-User [25%]; ERP Expert [25%]; Kara Siposki (Test Lead) [25%]; Marc Sanders (Development Lead) [25%]; Order Processing expert [25%]; Rick Burke (Infrastru... | 26h | 2,330 |
| 43 | 1.1.3.2.2 | Monthly All Hands Meeting 2 | 1d | 2014-07-24 | 2014-07-24 |  | 326.69d |  | start no earlier than 2014-07-24 | Chris Johnson (Project Manager) [25%]; Developer 1 (TBD) [25%]; Developer 2 (TBD) [25%]; Developer 3 (TBD) [25%]; End-User [25%]; ERP Expert [25%]; Kara Siposki (Test Lead) [25%]; Marc Sanders (Development Lead) [25%]; Order Processing expert [25%]; Rick Burke (Infrastru... | 26h | 2,330 |
| 44 | 1.1.3.2.3 | Monthly All Hands Meeting 3 | 1d | 2014-08-28 | 2014-08-28 |  | 301.69d |  | start no earlier than 2014-08-28 | Chris Johnson (Project Manager) [25%]; Developer 1 (TBD) [25%]; Developer 2 (TBD) [25%]; Developer 3 (TBD) [25%]; End-User [25%]; ERP Expert [25%]; Kara Siposki (Test Lead) [25%]; Marc Sanders (Development Lead) [25%]; Order Processing expert [25%]; Rick Burke (Infrastru... | 26h | 2,330 |
| 45 | 1.1.3.2.4 | Monthly All Hands Meeting 4 | 1d | 2014-09-25 | 2014-09-25 |  | 282.69d |  | start no earlier than 2014-09-25 | Chris Johnson (Project Manager) [25%]; Developer 1 (TBD) [25%]; Developer 2 (TBD) [25%]; Developer 3 (TBD) [25%]; End-User [25%]; ERP Expert [25%]; Kara Siposki (Test Lead) [25%]; Marc Sanders (Development Lead) [25%]; Order Processing expert [25%]; Rick Burke (Infrastru... | 26h | 2,330 |
| 46 | 1.1.3.2.5 | Monthly All Hands Meeting 5 | 1d | 2014-10-23 | 2014-10-23 |  | 262.69d |  | start no earlier than 2014-10-23 | Chris Johnson (Project Manager) [25%]; Developer 1 (TBD) [25%]; Developer 2 (TBD) [25%]; Developer 3 (TBD) [25%]; End-User [25%]; ERP Expert [25%]; Kara Siposki (Test Lead) [25%]; Marc Sanders (Development Lead) [25%]; Order Processing expert [25%]; Rick Burke (Infrastru... | 26h | 2,330 |
| 47 | 1.1.3.2.6 | Monthly All Hands Meeting 6 | 1d | 2014-11-28 | 2014-11-28 |  | 237.69d |  | start no earlier than 2014-11-27 | Chris Johnson (Project Manager) [25%]; Developer 1 (TBD) [25%]; Developer 2 (TBD) [25%]; Developer 3 (TBD) [25%]; End-User [25%]; ERP Expert [25%]; Kara Siposki (Test Lead) [25%]; Marc Sanders (Development Lead) [25%]; Order Processing expert [25%]; Rick Burke (Infrastru... | 26h | 2,330 |
| 48 | 1.1.3.2.7 | Monthly All Hands Meeting 7 | 1d | 2014-12-26 | 2014-12-26 |  | 219.69d |  | start no earlier than 2014-12-25 | Chris Johnson (Project Manager) [25%]; Developer 1 (TBD) [25%]; Developer 2 (TBD) [25%]; Developer 3 (TBD) [25%]; End-User [25%]; ERP Expert [25%]; Kara Siposki (Test Lead) [25%]; Marc Sanders (Development Lead) [25%]; Order Processing expert [25%]; Rick Burke (Infrastru... | 26h | 2,330 |
| 49 | 1.1.4 | **Monthly Stakeholder Update** | 132d | 2014-05-27 | 2014-12-01 |  | 56.69d |  |  |  | 28h | 2,100 |
| 50 | 1.1.4.1 | Prepare Monthly Stakeholder Update 1 | 2d | 2014-05-27 | 2014-05-28 |  | 186.69d |  | start no earlier than 2014-05-27 | Chris Johnson (Project Manager) [25%] | 4h | 300 |
| 51 | 1.1.4.2 | Prepare Monthly Stakeholder Update 2 | 2d | 2014-06-27 | 2014-06-30 |  | 135d |  | start no earlier than 2014-06-27 | Chris Johnson (Project Manager) [25%] | 4h | 300 |
| 52 | 1.1.4.3 | Prepare Monthly Stakeholder Update 3 | 2d | 2014-07-28 | 2014-07-29 |  | 115d |  | start no earlier than 2014-07-27 | Chris Johnson (Project Manager) [25%] | 4h | 300 |
| 53 | 1.1.4.4 | Prepare Monthly Stakeholder Update 4 | 2d | 2014-08-27 | 2014-08-28 |  | 301.69d |  | start no earlier than 2014-08-27 | Chris Johnson (Project Manager) [25%] | 4h | 300 |
| 54 | 1.1.4.5 | Prepare Monthly Stakeholder Update 5 | 2d | 2014-09-29 | 2014-09-30 |  | 279.69d |  | start no earlier than 2014-09-27 | Chris Johnson (Project Manager) [25%] | 4h | 300 |
| 55 | 1.1.4.6 | Prepare Monthly Stakeholder Update 6 | 2d | 2014-10-27 | 2014-10-28 |  | 259.69d |  | start no earlier than 2014-10-27 | Chris Johnson (Project Manager) [25%] | 4h | 300 |
| 56 | 1.1.4.7 | Prepare Monthly Stakeholder Update 7 | 2d | 2014-11-28 | 2014-12-01 |  | 236.69d |  | start no earlier than 2014-11-27 | Chris Johnson (Project Manager) [25%] | 4h | 300 |
| 57 | 1.2 | **Set-up Activities** | 1d | 2014-05-27 | 2014-05-27 |  | -5d | 0d |  |  | 56h | 5,560 |
| 58 | 1.2.1 | Project Team Kickoff Meeting | 1d | 2014-05-27 | 2014-05-27 |  | 367.69d |  |  | Chris Johnson (Project Manager) [25%]; Developer 1 (TBD) [25%]; Developer 2 (TBD) [25%]; Developer 3 (TBD) [25%]; End-User [25%]; ERP Expert [25%]; Kara Siposki (Test Lead) [25%]; Marc Sanders (Development Lead) [25%]; Order Processing expert [25%]; Rick Burke (Infrastru... | 26h | 2,330 |
| 59 | 1.2.2 | Kickoff Pizza Lunch | 1d | 2014-05-27 | 2014-05-27 |  | -5d | 0d |  | Chris Johnson (Project Manager) [25%]; Developer 1 (TBD) [25%]; Developer 2 (TBD) [25%]; Developer 3 (TBD) [25%]; End-User [25%]; ERP Expert [25%]; Kara Siposki (Test Lead) [25%]; Marc Sanders (Development Lead) [25%]; Order Processing expert [25%]; Rick Burke (Infrastructure Lead) [25%]; Ryan Neff (Functional Lead) [25%]; Sanjay Vohra (DBA) [25%]; Stacy Lyle (Functional Analyst) [25%]; Todd Eliason (Tester) [25%]; Trainer 1 [25%] | 30h | 3,230 |
| 60 | 1.3 | **System Requirements** | 13.33d | 2014-05-27 | 2014-06-13 |  |  |  |  |  | 295.92h | 22,194 |
| 61 | 1.3.1 | Gather Business Requirements | 4d | 2014-05-28 | 2014-06-02 | 59 | -5d | 0d |  | Ryan Neff (Functional Lead); Stacy Lyle (Functional Analyst) | 64h | 4,800 |
| 62 | 1.3.2 | Design Business Process Flows | 2d | 2014-06-03 | 2014-06-04 | 61 | -5d | 0d |  | Ryan Neff (Functional Lead); Stacy Lyle (Functional Analyst) | 32h | 2,400 |
| 63 | 1.3.3 | Document Business Process Flows | 0.5d | 2014-06-10 | 2014-06-10 | 62 | 2.83d |  |  | Ryan Neff (Functional Lead); Stacy Lyle (Functional Analyst) | 8h | 600 |
| 64 | 1.3.4 | Finalize Technical Requirements | 6d | 2014-05-27 | 2014-06-03 |  | 5.33d |  |  | Rick Burke (Infrastructure Lead) | 48h | 3,600 |
| 65 | 1.3.5 | Create Operational Requirements | 5d | 2014-06-05 | 2014-06-11 | 61, 62 | -5d | 0d |  | Ryan Neff (Functional Lead); Stacy Lyle (Functional Analyst); Rick Burke (Infrastructure Lead) | 120h | 9,000 |
| 66 | 1.3.6 | Identify Technical Infrastructure Needs | 2d | 2014-06-12 | 2014-06-13 | 64, 65 | -0.67d | 0d |  | Rick Burke (Infrastructure Lead) | 16h | 1,200 |
| 67 | 1.3.7 | Document Requirements | 0.66d | 2014-06-12 | 2014-06-13 | 61, 64, 65 | 0d |  |  | Rick Burke (Infrastructure Lead); Stacy Lyle (Functional Analyst); Ryan Neff (Functional Lead) | 7.92h | 594 |

| ID | WBS | Task | Duration | Start | Finish | Predecessors | Total slack | Free slack | Resources | Work | Cost |
| --- | --- | --- | --- | --- | --- | --- | --- | --- | --- | --- | --- |
| 68 | 1.4 | **Software Requirements** | 20.5d | 2014-06-11 | 2014-07-10 |  |  |  |  | 336h | 25,200 |
| 69 | 1.4.1 | **Create Functional Requirements** | 20.5d | 2014-06-11 | 2014-07-10 | 61, 62, 65 |  |  |  | 216h | 16,200 |
| 70 | 1.4.1.1 | Capture Customer Profile | 4d | 2014-06-19 | 2014-06-25 |  | -1.83d | 0d | Ryan Neff (Functional Lead) | 32h | 2,400 |
| 71 | 1.4.1.2 | View and Search Product Catalog | 6d | 2014-06-11 | 2014-06-19 |  | -4.5d | 0d | Ryan Neff (Functional Lead) | 48h | 3,600 |
| 72 | 1.4.1.3 | Updating and Calculating Shopping Cart | 3d | 2014-06-25 | 2014-06-30 | 71 | -4.83d | 0d | Ryan Neff (Functional Lead) | 24h | 1,800 |
| 73 | 1.4.1.4 | Taking Payments | 6d | 2014-06-11 | 2014-06-19 |  | 2.17d |  | Stacy Lyle (Functional Analyst) | 48h | 3,600 |
| 74 | 1.4.1.5 | Submit Order | 8d | 2014-06-30 | 2014-07-11 | 70, 71, 72, 73 | -4.83d | 0d | Ryan Neff (Functional Lead) [50%] | 32h | 2,400 |
| 75 | 1.4.1.6 | Check Order History & Order Status | 3d | 2014-07-11 | 2014-07-16 | 74 | -4.83d | 0d | Ryan Neff (Functional Lead) | 24h | 1,800 |
| 76 | 1.4.1.7 | Document Functional requirements | 0.5d | 2014-07-16 | 2014-07-17 | 70, 71, 72, 73, 74, 75 | -4.83d | 0d | Ryan Neff (Functional Lead); Stacy Lyle (Functional Analyst) | 8h | 600 |
| 77 | 1.4.2 | Create Data Requirements | 3d | 2014-06-25 | 2014-06-30 | 70, 71 | 5.67d |  | Stacy Lyle (Functional Analyst) | 24h | 1,800 |
| 78 | 1.4.3 | Create ERP Interface Requirements | 7d | 2014-06-30 | 2014-07-10 | 74SS | -1.33d | 0d | Stacy Lyle (Functional Analyst) | 56h | 4,200 |
| 79 | 1.4.4 | Create User Interface Requirements | 4d | 2014-06-19 | 2014-06-25 | 69SS | 8.67d |  | Stacy Lyle (Functional Analyst) | 32h | 2,400 |
| 80 | 1.4.5 | Document Data, ERP Interface and User Interface Requiremnts | 1d | 2014-07-10 | 2014-07-11 | 77, 78, 79 | -1.33d | 0d | Stacy Lyle (Functional Analyst) | 8h | 600 |
| 81 | 1.5 | **Detailed Design** | 31.19d | 2014-07-10 | 2014-08-22 | 68 | -5d | 0d |  | 784h | 74,784 |
| 82 | 1.5.1 | Design Capture Customer Profile Pages & Components | 14d | 2014-07-10 | 2014-07-30 |  | -5d | 0d | Marc Sanders (Development Lead); Ryan Neff (Functional Lead) [50%] | 108h | 8,100 |
| 83 | 1.5.2 | Design View and Search Product Catalog Pages & Components | 10.66d | 2014-07-10 | 2014-07-25 |  | 4.2d | 0d | Developer 1 (TBD); Ryan Neff (Functional Lead) [50%] | 108h | 14,580 |
| 84 | 1.5.3 | Design Updating and Calculating Shopping Cart | 3.42d | 2014-07-25 | 2014-07-30 | 83 | 4.2d | 0d | Developer 1 (TBD); Ryan Neff (Functional Lead) | 48h | 5,760 |
| 85 | 1.5.4 | Design Taking Payments Pages & Components | 5.83d | 2014-07-10 | 2014-07-22 |  | 10.28d | 6.08d | Marc Sanders (Development Lead); Stacy Lyle (Functional Analyst) | 48h | 3,600 |
| 86 | 1.5.5 | Design Submit Order Pages & Components | 9.25d | 2014-07-30 | 2014-08-12 | 82, 83, 84, 85 | 9.86d | 0d | Marc Sanders (Development Lead); Ryan Neff (Functional Lead) | 128h | 9,600 |
| 87 | 1.5.6 | Design check Order History & Order Status Pages & Components | 2d | 2014-08-12 | 2014-08-14 | 86 | 9.86d | 0d | Marc Sanders (Development Lead); Ryan Neff (Functional Lead) | 32h | 2,400 |
| 88 | 1.5.7 | Design Logical & Physical Data Model | 13.83d | 2014-07-10 | 2014-07-30 |  | -1.83d | 0d | Sanjay Vohra (DBA); Stacy Lyle (Functional Analyst) | 144h | 10,800 |
| 89 | 1.5.8 | Design ERP Interface | 16.91d | 2014-07-30 | 2014-08-22 | 82, 83, 84, 85 | 4.2d | 0d | Developer 1 (TBD) [66.7%]; Stacy Lyle (Functional Analyst) [66.7%] | 160h | 19,200 |
| 90 | 1.5.9 | Document the design of all modules | 0.2d | 2014-08-22 | 2014-08-22 | 82, 83, 84, 85, 86, 87, 88, 89 | 4.2d | 0d | Ryan Neff (Functional Lead); Stacy Lyle (Functional Analyst); Developer 1 (TBD); Marc Sanders (Development Lead); Sanjay Vohra (DBA) | 8h | 744 |
| 91 | 1.6 | **Test Planning** | 55.86d | 2014-07-10 | 2014-09-29 |  | 4.2d |  |  | 448h | 33,600 |
| 92 | 1.6.1 | Gather Testing Requirements | 7d | 2014-07-10 | 2014-07-21 | 69 | 28.39d | 24.19d | Kara Siposki (Test Lead); Todd Eliason (Tester) | 112h | 8,400 |
| 93 | 1.6.2 | Create System Test Plan & Test Cases | 10d | 2014-08-22 | 2014-09-08 | 92, 81 | 4.2d | 0d | Kara Siposki (Test Lead); Todd Eliason (Tester) | 160h | 12,000 |
| 94 | 1.6.3 | Write System Test Scripts | 14.67d | 2014-09-08 | 2014-09-29 | 93 | 4.2d | 0d | Kara Siposki (Test Lead); Todd Eliason (Tester) | 176h | 13,200 |

| ID | WBS | Task | Duration | Start | Finish | Predecessors | Total slack | Free slack | Resources | Work | Cost |
| --- | --- | --- | --- | --- | --- | --- | --- | --- | --- | --- | --- |
| 95 | 1.7 | **Technical Infrastructure** | 108d | 2014-06-13 | 2014-11-13 |  |  |  |  | 876.8h | 65,760 |
| 96 | 1.7.1 | Create Development Environment | 20d | 2014-06-16 | 2014-07-15 | 66 | 2.17d | 0d | Rick Burke (Infrastructure Lead) | 160h | 12,000 |
| 97 | 1.7.2 | Create Testing Environment | 38d | 2014-07-15 | 2014-09-08 | 96 | 2.17d | 0d | Rick Burke (Infrastructure Lead) [90%] | 273.6h | 20,520 |
| 98 | 1.7.3 | Support Development Environment | 38d | 2014-07-15 | 2014-09-08 | 96 | 48.17d |  | Rick Burke (Infrastructure Lead) [10%] | 30.4h | 2,280 |
| 99 | 1.7.4 | Support Testing Environment & Deployment | 46d | 2014-09-08 | 2014-11-11 | 97 | 2.17d |  | Rick Burke (Infrastructure Lead) | 368h | 27,600 |
| 100 | 1.7.5 | Support Database | 46d | 2014-09-17 | 2014-11-20 | 123 | -5d | 0d | Sanjay Vohra (DBA) [10%] | 36.8h | 2,760 |
| 101 | 1.7.6 | Document Technical infrastructure details | 0.5d | 2014-11-20 | 2014-11-20 | 96, 97, 98, 99, 100 | -5d | 0d | Rick Burke (Infrastructure Lead); Sanjay Vohra (DBA) | 8h | 600 |
| 102 | 1.8 | **Privacy & Security Measures** | 22.8d | 2014-08-22 | 2014-09-25 |  | 103.2d |  |  | 222.83h | 17,437.5 |
| 103 | 1.8.1 | **Server Security** | 22.8d | 2014-08-22 | 2014-09-25 |  | 103.2d |  |  | 104.83h | 10,837.5 |
| 104 | 1.8.1.1 | Perform Vulnerability Risk Assessment | 5d | 2014-08-22 | 2014-08-29 | 90 | 298d | 0d | Chris Johnson (Project Manager) [10%]; Rick Burke (Infrastru... [25%]; Additional Analyst 1 [50%] | 24.83h | 1,237.5 |
| 105 | 1.8.1.2 | Develop Backup & Restore Policy | 2d | 2014-08-29 | 2014-09-03 | 104 | 299d |  | Additional Analyst 1 | 16h | 1,200 |
| 106 | 1.8.1.3 | Develop Contingency Plan for Security Breaches | 3d | 2014-08-29 | 2014-09-04 | 104 | 298d |  | Additional Analyst 1 | 24h | 1,800 |
| 107 | 1.8.1.4 | Implement Security Controls | 5d | 2014-09-18 | 2014-09-25 | 124 | 283.2d |  | Developer 1 (TBD) | 40h | 6,600 |
| 108 | 1.8.2 | **Physical Security** | 20d | 2014-08-22 | 2014-09-22 |  | 106d |  |  | 94h | 4,800 |
| 109 | 1.8.2.1 | Perform Vulnerability Risk Assessment | 5d | 2014-08-22 | 2014-08-29 | 90 | 286d | 0d | Chris Johnson (Project Manager) [10%]; Rick Burke (Infrastru... [25%]; Additional Analyst 2 [50%] | 34h | 1,800 |
| 110 | 1.8.2.2 | Develop Natural Disaster Recovery Plan | 5d | 2014-08-29 | 2014-09-08 | 109 | 286d | 0d | Additional Analyst 2 | 40h | 3,000 |
| 111 | 1.8.2.3 | Secure Physical Premises | 10d | 2014-09-08 | 2014-09-22 | 110 | 286d |  | Rick Burke (Infrastru... [25%] | 20h |  |
| 112 | 1.8.3 | **User Security** | 2d | 2014-09-08 | 2014-09-10 |  | 114d |  |  | 24h | 1,800 |
| 113 | 1.8.3.1 | Develop End User Privacy Policy | 1d | 2014-09-08 | 2014-09-09 | 110 | 294d | 0d | End-User; Additional Analyst 2 | 16h | 1,200 |
| 114 | 1.8.3.2 | Develop Password Policy | 1d | 2014-09-09 | 2014-09-10 | 113 | 294d |  | Additional Analyst 2 | 8h | 600 |
| 115 | 1.9 | **Development & Unit Test** | 40.48d | 2014-07-30 | 2014-09-25 | 96 | -5d | 0d |  | 1292.24h | 167,110.8 |
| 116 | 1.9.1 | Train developers | 3d | 2014-07-30 | 2014-08-04 | 82 | -5d | 0d | Trainer 1; Developer 1 (TBD); Developer 2 (TBD); Developer 3 (TBD) | 96h | 14,160 |
| 117 | 1.9.2 | Build Capture Customer Profile Pages & Components | 13d | 2014-08-04 | 2014-08-21 | 82, 116 | 13.05d | 6d | Developer 2 (TBD) | 104h | 18,200 |
| 118 | 1.9.3 | Build View and Search Product Catalog Pages & Components | 12d | 2014-08-04 | 2014-08-20 | 83, 116 | 7.05d | 0d | Developer 3 (TBD) | 96h | 16,800 |
| 119 | 1.9.4 | Build Updating and Calculating Shopping Cart | 7d | 2014-08-20 | 2014-08-29 | 84, 118, 116 | 7.05d | 0d | Developer 3 (TBD) | 56h | 9,800 |
| 120 | 1.9.5 | Build Taking Payments Pages & Components | 6d | 2014-08-21 | 2014-08-29 | 85, 116 | 7.05d | 0d | Developer 2 (TBD) | 48h | 8,400 |
| 121 | 1.9.6 | Build Submit Order Pages & Components | 12d | 2014-08-29 | 2014-09-17 | 86, 117, 118, 119, 120, 116 | 7.05d | 0.99d | Developer 2 (TBD); Developer 3 (TBD) | 192h | 33,600 |
| 122 | 1.9.7 | Build Check Order History & Order Status Pages & Components | 6d | 2014-08-14 | 2014-08-25 | 87, 116 | 23.52d | 17.46d | Marc Sanders (Development Lead) | 48h | 3,600 |
| 123 | 1.9.8 | Build Logical & Physical Data Model | 31d | 2014-08-04 | 2014-09-17 | 88, 116 | -5d | 0d | Sanjay Vohra (DBA) [50%] | 124h | 9,300 |
| 124 | 1.9.9 | Build ERP Interface | 18d | 2014-08-22 | 2014-09-18 | 89, 116 | 6.06d | 0d | Developer 1 (TBD) | 144h | 23,760 |
| 125 | 1.9.10 | Support Development & Assembly Test | 23d | 2014-08-22 | 2014-09-25 | 81, 116 | 277.71d | 0d | Ryan Neff (Functional Lead); Stacy Lyle (Functional Analyst) | 368h | 27,600 |
| 126 | 1.9.11 | Document development work and best practices | 0.29d | 2014-09-25 | 2014-09-25 | 117, 118, 119, 120, 121, 122, 123, 124, 125 | 277.71d | 0d | Developer 1 (TBD); Developer 2 (TBD); Developer 3 (TBD); Stacy Lyle (Functional Analyst); Sanjay Vohra (DBA); Marc Sanders (Development Lead); Ryan Neff (Functional Lead) | 16.24h | 1,890.8 |

| ID | WBS | Task | Duration | Start | Finish | Predecessors | Total slack | Free slack | Resources | Work | Cost |
| --- | --- | --- | --- | --- | --- | --- | --- | --- | --- | --- | --- |
| 127 | 1.10 | **Testing** | 51.2d | 2014-08-22 | 2014-11-04 |  |  |  |  | 2191.84h | 262,280.87 |
| 128 | 1.10.1 | **Perform Assembly Testing** | 17.99d | 2014-08-29 | 2014-09-25 | 92 | 6.06d | 1.87d |  | 256h | 30,800 |
| 129 | 1.10.1.1 | Perform Phase 1 Testing | 12d | 2014-08-29 | 2014-09-17 | 117, 118, 119 | 7.05d | 0d | Marc Sanders (Development Lead) | 96h | 7,200 |
| 130 | 1.10.1.2 | Perform Phase 2 Testing | 5d | 2014-09-18 | 2014-09-25 | 120, 121, 122, 129, 123, 124 | 6.06d |  | Marc Sanders (Development Lead); Developer 1 (TBD); Developer 2 (TBD); Developer 3 (TBD) | 160h | 23,600 |
| 131 | 1.10.2 | Perform System Testing | 14.55d | 2014-09-29 | 2014-10-17 | 128, 93, 94 | 4.2d | 0d | Developer 1 (TBD); Developer 2 (TBD); Developer 3 (TBD); Kara Siposki (Test Lead); Marc Sanders (Development Lead); Ryan Neff (Functional Lead); Stacy Lyle (Functional Analyst); Todd Eliason (Tester); End-User; ERP Expert; Order Processing expert | 1280h | 153,018.18 |
| 132 | 1.10.3 | Perform Validation Testing | 7.27d | 2014-10-17 | 2014-10-29 | 131 | 4.2d | 0d | Kara Siposki (Test Lead); Todd Eliason (Tester); Marc Sanders (Development Lead); Developer 1 (TBD); Developer 2 (TBD); Developer 3 (TBD); Ryan Neff (Functional Lead); Stacy Lyle (Functional Analyst); End-User; ERP Expert; Order Processing expert | 640h | 76,509.09 |
| 133 | 1.10.4 | Document tests and test results | 0.33d | 2014-10-29 | 2014-10-29 | 128, 131, 132 | 4.2d | 0d | Developer 1 (TBD); Developer 2 (TBD); Developer 3 (TBD); Kara Siposki (Test Lead); Stacy Lyle (Functional Analyst); Todd Eliason (Tester) | 15.84h | 1,953.6 |
| 134 | 1.11 | **Quality Control** | 39.67d | 2014-09-17 | 2014-11-12 |  | 69.51d |  |  | 116h | 16,300 |
| 135 | 1.11.1 | Develop QC Plan | 5d | 2014-09-17 | 2014-09-24 | 129 | 284.19d |  | Kara Siposki (Test Lead) [25%] | 10h | 750 |
| 136 | 1.11.2 | **Perform QC** | 10d | 2014-10-29 | 2014-11-12 |  | 69.51d |  |  | 106h | 15,550 |
| 137 | 1.11.2.1 | Check All Site Links | 2d | 2014-10-29 | 2014-10-31 | 132 | 257.51d |  | Todd Eliason (Tester) [25%] | 4h | 300 |
| 138 | 1.11.2.2 | Review Server Error Logs | 3d | 2014-10-29 | 2014-11-03 | 132 | 256.51d |  | Todd Eliason (Tester) [25%] | 6h | 450 |
| 139 | 1.11.2.3 | Perform Cross-Browser Testing | 3d | 2014-10-29 | 2014-11-03 | 132 | 256.51d |  | Todd Eliason (Tester) [25%] | 6h | 450 |
| 140 | 1.11.2.4 | Accessibility Testing | 5d | 2014-10-29 | 2014-11-05 | 132 | 249.51d | 0d | Todd Eliason (Tester) [25%] | 10h | 750 |
| 141 | 1.11.2.5 | Corrective Action | 5d | 2014-11-05 | 2014-11-12 | 140 | 249.51d |  | Developer 1 (TBD); Developer 2 (TBD) | 80h | 13,600 |
| 142 | 1.12 | **Deployment** | 35.77d | 2014-11-10 | 2015-01-06 | 127 | 0d |  |  | 1424h | 155,520 |
| 143 | 1.12.1 | Implement System | 10.33d | 2014-11-10 | 2014-11-24 |  | 0d |  | Kara Siposki (Test Lead); Todd Eliason (Tester); Marc Sanders (Development Lead); Developer 1 (TBD); Developer 2 (TBD); Developer 3 (TBD); Ryan Neff (Functional Lead); Stacy Lyle (Functional Analyst) | 640h | 71,200 |
| 144 | 1.12.2 | Deploy To Production | 1d | 2014-11-24 | 2014-11-25 | 143 | 0d |  | Kara Siposki (Test Lead); Todd Eliason (Tester); Marc Sanders (Development Lead); Developer 1 (TBD); Developer 2 (TBD); Developer 3 (TBD); Ryan Neff (Functional Lead); Stacy Lyle (Functional Analyst) | 64h | 7,120 |
| 145 | 1.12.3 | Project Wrap up | 24.44d | 2014-11-25 | 2015-01-06 | 144 | 215.56d | 6.87d | Developer 1 (TBD) [81.8%]; Developer 2 (TBD) [81.8%]; Developer 3 (TBD) [81.8%]; Kara Siposki (Test Lead) [81.8%]; Marc Sanders (Development Lead) [81.8%]; Ryan Neff (Functional Lead) [81.8%]; Stacy Lyle (Functional Analyst) [81.8%]; Todd Eliason (Tester) [81.8%] | 720h | 77,200 |
| 146 | 1.13 | **Maintenance & Support** | 102.71d | 2014-09-25 | 2015-02-24 |  | 0d |  |  | 336h | 25,200 |
| 147 | 1.13.1 | Train end users | 2d | 2014-10-29 | 2014-10-31 | 133 | 257.18d |  | Trainer 1 | 16h | 1,200 |
| 148 | 1.13.2 | Develop maintenance strategy | 5d | 2014-09-25 | 2014-10-02 | 126 | 277.71d |  | Additional Analyst 1 | 40h | 3,000 |
| 149 | 1.13.3 | Develop end user support strategy | 5d | 2014-09-25 | 2014-10-02 | 126 | 277.71d |  | Additional Analyst 2 | 40h | 3,000 |
| 150 | 1.13.4 | Document problems and resolutions | 60d | 2014-11-25 | 2015-02-24 | 144 | 0d |  | Sanjay Vohra (DBA) [25%] | 120h | 9,000 |
| 151 | 1.13.5 | Monitor performance | 60d | 2014-11-25 | 2015-02-24 | 144 | 0d |  | Sanjay Vohra (DBA) [25%] | 120h | 9,000 |
